# Cittavox

Schedule from ProjectLibre, 2023-03-20 to 2024-08-20.

## Calendars

- CalendárioCitta: Mon-Fri 08:00-12:00, 13:00-17:00; Sat-Sun off. Exceptions (off unless hours are given): 2023-04-06 to 2023-04-07, 2023-04-20 to 2023-04-21, 2023-04-30 to 2023-05-01, 2023-05-03 to 2023-05-04, 2023-06-07 to 2023-06-08, 2023-09-06 to 2023-09-07, 2023-10-11 to 2023-10-12, 2023-11-01 to 2023-11-02, 2023-11-14 to 2023-11-15, 2023-12-24 to 2023-12-25, 2023-12-31 to 2024-01-01, 2024-02-11 to 2024-02-14, 2024-03-28 to 2024-03-29, 2024-04-30 to 2024-05-01, 2024-06-23 to 2024-06-24.

## Resources

| Resource | Group | Rate |
| --- | --- | --- |
| Não atribuído |  |  |
| Marcílio Júnior | TI | 41.66 |
| Lavínia C. Ribeiro | ADM |  |
| Mateus L. Cunha | Finanças |  |
| Larissa F. Pereira | T.I |  |
| Diego Rocha Barbosa | T.I |  |
| Luana Fernanda Gomes | T.I |  |
| Alex Santos Pereira | T.I |  |
| Marleide Alves de França | T.I |  |
| Josino Neto | T.I |  |
| Martim Alves Rocha | T.I |  |
| Víctor S. Cavalcante | T.I |  |
| Aline D. Cavalcante | ADM |  |
| Alice Gomes Pinto | T.I |  |
| Gabrielly Pereira Santos | T.I |  |
| Kai Gomes Fernandes | T.I |  |
| André Barbosa de Oliveira | T.I |  |
| Bianca O. Lima | T.I |  |

## Schedule

| ID | WBS | Task | Type | Duration | Start | Finish | Predecessors | Complete | Baseline start | Baseline finish | Constraint | Resources |
| --- | --- | --- | --- | --- | --- | --- | --- | --- | --- | --- | --- | --- |
| 1 | 1 | **Etapa 1 - Iniciação** |  | 12d? | 2023-03-20 | 2023-04-04 |  | 100% | 2023-03-20 | 2023-04-04 |  |  |
| 2 | 1.1 | Definir o termo de abertura do projeto | milestone | 11d? | 2023-03-20 | 2023-04-03 |  | 100% | 2023-03-20 | 2023-04-03 |  | Marcílio Júnior |
| 3 | 1.2 | Reunião com os Stakeholders |  | 1d? | 2023-04-04 | 2023-04-04 | 2 | 100% | 2023-04-04 | 2023-04-04 | start no earlier than 2023-04-04 | Marcílio Júnior; Lavínia C. Ribeiro; Mateus L. Cunha; Larissa F. Pereira |
| 4 | 2 | **Etapa 2 - Planejamento*** |  | 198.24d? | 2023-05-09 | 2024-02-23 |  | 12% | 2023-04-11 | 2023-09-08 | start no earlier than 2023-04-05 |  |
| 5 | 2.1 | Reunião de planejamento para discutir requisitos |  | 84.9d? | 2023-05-09 | 2023-09-05 | 11 | 100% | 2023-05-09 | 2023-05-09 |  | Marcílio Júnior; Lavínia C. Ribeiro; Larissa F. Pereira; Bianca O. Lima; Martim Alves Rocha; Josino Neto |
| 6 | 2.2 | Desenvolver orçamento inicial |  | 143.84d? | 2023-05-23 | 2023-12-18 | 10 | 75% | 2023-05-23 | 2023-05-25 | start no earlier than 2023-04-06 | Marcílio Júnior; Lavínia C. Ribeiro; Mateus L. Cunha |
| 7 | 2.3 | Revisar o workflow e softwares atuais |  | 2.5d? | 2023-05-23 | 2023-05-25 | 3 | 41% | 2023-04-11 | 2023-04-14 | start no earlier than 2023-04-11 | Marcílio Júnior; Larissa F. Pereira; Bianca O. Lima; Martim Alves Rocha |
| 8 | 2.4 | Identificar fornecedores |  | 129.1d? | 2023-05-23 | 2023-11-27 | 5 | 74% | 2023-05-09 | 2023-05-12 | start no earlier than 2023-04-17 | Mateus L. Cunha; Aline D. Cavalcante; Josino Neto |
| 9 | 2.5 | Revisar propostas |  | 128.6d? | 2023-05-26 | 2023-11-30 | 8 | 25% | 2023-05-12 | 2023-05-18 | start no earlier than 2023-04-20 | Marcílio Júnior; Josino Neto |
| 10 | 2.6 | Selecionar solução e fornecedor |  | 3d? | 2023-11-30 | 2023-12-05 | 9 |  | 2023-05-18 | 2023-05-23 | start no earlier than 2023-04-26 | Marcílio Júnior |
| 11 | 2.7 | Apresentar novo workflow |  | 1d? | 2023-05-29 | 2023-05-30 | 12 |  | 2023-05-08 | 2023-05-08 | start no earlier than 2023-05-02 | Bianca O. Lima |
| 12 | 2.8 | Refinar novo workflow |  | 2d? | 2023-05-25 | 2023-05-29 | 7 |  | 2023-05-03 | 2023-05-05 | start no earlier than 2023-05-03 | Bianca O. Lima |
| 13 | 2.9 | Desenvolver cronograma de implantação do Projeto Cittavox | milestone | 9d? | 2023-12-18 | 2024-01-01 | 6 |  | 2023-05-25 | 2023-06-21 | start no earlier than 2023-05-08 | Marcílio Júnior; Josino Neto |
| 14 | 2.10 | Tirar dúvidas e últimos acertos do processo |  | 2d? | 2023-09-05 | 2023-09-07 | 5 |  | 2023-06-01 | 2023-06-02 | start no earlier than 2023-06-01 | Josino Neto |
| 15 | 2.11 | Definir o design da Aplicação |  | 4d? | 2024-01-01 | 2024-01-05 | 13 |  | 2023-06-21 | 2023-06-27 | start no earlier than 2023-06-05 | Josino Neto |
| 16 | 2.12 | Definir o protótipo |  | 5d? | 2024-02-16 | 2024-02-23 | 22 |  | 2023-09-01 | 2023-09-08 | start no earlier than 2023-06-12 | Josino Neto |
| 17 | 2.13 | Definir o banco de dados |  | 1.67d? | 2024-01-01 | 2024-01-02 | 13 |  | 2023-06-21 | 2023-06-28 | start no earlier than 2023-06-19 | Josino Neto; Kai Gomes Fernandes; Marleide Alves de França |
| 18 | 2.14 | Definir os critérios de avaliação e testes da aplicação |  | 2.5d? | 2024-01-01 | 2024-01-03 | 13 |  | 2023-06-26 | 2023-06-30 | start no earlier than 2023-06-26 | Marleide Alves de França; André Barbosa de Oliveira |
| 19 | 2.15 | Estabelecer cronograma de treinamentos |  | 2d? | 2024-01-01 | 2024-01-03 | 13 |  | 2023-07-03 | 2023-07-04 | start no earlier than 2023-07-03 | Josino Neto |
| 20 | 3 | **Etapa 3 - Execução*** |  | 79.09d? | 2024-01-02 | 2024-04-29 |  |  | 2023-07-05 | 2024-04-30 | start no earlier than 2023-07-05 |  |
| 21 | 3.1 | Elaborar o design da Aplicação |  | 12d? | 2024-01-05 | 2024-01-23 | 15 |  | 2023-07-05 | 2023-08-07 | start no earlier than 2023-07-05 | Gabrielly Pereira Santos; Diego Rocha Barbosa |
| 22 | 3.2 | Elaborar as estórias do usuário |  | 18d? | 2024-01-23 | 2024-02-16 | 21 |  | 2023-08-08 | 2023-08-31 | start no earlier than 2023-08-08 | Gabrielly Pereira Santos |
| 23 | 3.3 | Criar o protótipo |  | 22d? | 2024-02-23 | 2024-03-26 | 16 |  | 2023-09-01 | 2023-10-03 | start no earlier than 2023-09-01 | Gabrielly Pereira Santos |
| 24 | 3.4 | Modelar o banco de dados |  | 29d? | 2024-01-02 | 2024-02-12 | 17 |  | 2023-10-06 | 2024-01-02 | start no earlier than 2023-10-06 | Kai Gomes Fernandes; Marleide Alves de França |
| 25 | 3.5 | Criar o banco de dados |  | 10d? | 2024-02-12 | 2024-02-28 | 24 |  | 2024-01-03 | 2024-02-05 | start no earlier than 2024-01-03 | Marleide Alves de França; Kai Gomes Fernandes |
| 26 | 3.6 | Teste do Software |  | 3.75d? | 2024-02-06 | 2024-02-09 | 18 |  | 2024-02-06 | 2024-02-29 | start no earlier than 2024-02-06 | André Barbosa de Oliveira; Diego Rocha Barbosa; Marleide Alves de França; Kai Gomes Fernandes |
| 27 | 3.7 | Realizar Treinamentos |  | 10d? | 2024-03-01 | 2024-03-14 | 19 |  | 2024-03-01 | 2024-03-28 | start no earlier than 2024-03-01 | Josino Neto; Kai Gomes Fernandes |
| 28 | 3.8 | Deploy da Aplicação | milestone | 22d? | 2024-03-29 | 2024-04-29 | 26 |  | 2024-03-29 | 2024-04-30 | start no earlier than 2024-03-29 | Kai Gomes Fernandes |

Notes:
- 4: NESTA ETAPA DO PROJETO,O MÉTODO ESCOLHIDO PARA ESTABELECER A DEPENDÊNCIA ENTRE AS TAREFAS FOI O MÉTODO FINISH- START (FS). OU SEJA,TÉRMINO-INÍCIO. NESTE RELACIONAMENTO, UMA ATIVIDADE SUCESSORA B NÃO PODE SER INICIADA ATÉ A ATIVIDADE PREDECESSORA A TER SIDO TERMINADA. PORÉM,UMA ATIVIDADE SUCESSORA DE B PODE COMEÇAR A QUALQUER MOMENTO DEPOIS QUE A ATIVIDADE PREDECESSORA A TENHA SIDO CONCLUÍDA. OBS: O PERÍODO DA ATIVIDADE E DEPENDÊNCIA

| ID | WBS | Task | Type | Duration | Start | Finish | Predecessors | Baseline start | Baseline finish | Constraint | Resources |
| --- | --- | --- | --- | --- | --- | --- | --- | --- | --- | --- | --- |
| 29 | 4 | **Etapa 5 - Encerramento** |  | 78d? | 2024-05-02 | 2024-08-20 |  | 2024-05-02 | 2024-08-20 | start no earlier than 2024-05-02 |  |
| 30 | 4.1 | Relatório consolidado |  | 5.5d? | 2024-05-02 | 2024-05-09 |  | 2024-05-02 | 2024-05-31 |  | Marcílio Júnior; Lavínia C. Ribeiro; Mateus L. Cunha; Larissa F. Pereira |
| 31 | 4.2 | Relatório de lições aprendidas |  | 4.75d? | 2024-06-03 | 2024-06-28 | 30 | 2024-06-03 | 2024-06-28 | start no earlier than 2024-06-03 | Marcílio Júnior; Víctor S. Cavalcante; Bianca O. Lima; Aline D. Cavalcante |
| 32 | 4.3 | Entrega final da aplicação |  | 0.33d? | 2024-07-30 | 2024-07-30 | 31 | 2024-07-30 | 2024-07-30 | start no earlier than 2024-07-30 | Marcílio Júnior; Bianca O. Lima; Martim Alves Rocha |
| 33 | 4.4 | Evento de comemoração | milestone | 0.06d? | 2024-08-20 | 2024-08-20 | 32 | 2024-08-20 | 2024-08-20 | start no earlier than 2024-08-20 | Marcílio Júnior; Lavínia C. Ribeiro; Mateus L. Cunha; Larissa F. Pereira; Diego Rocha Barbosa; Luana Fernanda Gomes; Alex Santos Pereira; Marleide Alves de França; Josino Neto; Martim Alves Rocha; Víctor S. Cavalcante; Aline D. Cavalcante; Alice Gomes Pinto; Gabrielly Pereira Santos; Kai Gomes Fernandes; André Barbosa de Oliveira; Bianca O. Lima |
